# Empower EVD Gantt

Schedule from MS Project XML, 2016-10-03 to 2017-04-07, costs in $, A marks actual dates.

## Calendars

- Standard: Mon-Fri 08:00-12:00, 13:00-17:00; Sat-Sun off.

## Resources

| Resource |
| --- |
| Tsungai Kaviya |
| David Chifunyise |

## Schedule

| ID | Task | Type | Duration | Start | Finish | Predecessors | Remaining | Total slack | Constraint | Resources | Work | Cost |
| --- | --- | --- | --- | --- | --- | --- | --- | --- | --- | --- | --- | --- |
| 1 | System Analysis & Design |  | 5d? | 2016-10-03 A | 2016-10-07 |  | 5d? | 0d | finish no earlier than 2016-10-07 | Tsungai Kaviya | 80h | 15 |
| 2 | Provision Cloud VMs & OS |  | 5d? | 2016-10-03 A | 2016-10-07 |  | 5d? | 0d | finish no earlier than 2016-10-07 | David Chifunyise | 40h | 3.5 |
| 3 | Setup Keepass Server |  | 1d? | 2016-10-10 A | 2016-10-10 | 2 | 1d? | 0d | start no earlier than 2016-10-10 | Tsungai Kaviya | 8h | 3 |
| 4 | Setup Jenkins Server |  | 5d? | 2016-10-11 A | 2016-10-17 | 2, 3 | 5d? | 0d | start no earlier than 2016-10-10 | David Chifunyise | 8h | 3.5 |
| 5 | Setup GIT Code Repository |  | 1d? | 2016-10-11 A | 2016-10-11 | 2, 3 | 1d? | 0d | start no earlier than 2016-10-11 | Tsungai Kaviya | 8h | 3 |
| 6 | Setup Wildfly Server |  | 5d? | 2016-10-17 A | 2016-10-21 | 2, 3 | 5d? | 0d | finish no earlier than 2016-10-21 | David Chifunyise | 40h | 3.5 |
| 7 | Setup Mail Server |  | 5d? | 2016-10-24 A | 2016-10-28 | 2, 3 | 5d? | 0d | finish no earlier than 2016-10-28 | David Chifunyise | 8h | 3.5 |
| 8 | Database, Response Codes & Notifications |  | 13d? | 2016-10-12 A | 2016-10-28 | 1, 2, 3, 5 | 13d? | 0d | start no earlier than 2016-10-12 | Tsungai Kaviya | 88h | 39 |
| 9 | Frontend Login |  | 3d? | 2016-10-31 A | 2016-11-02 | 8 | 3d? | 0d | finish no earlier than 2016-10-31 | David Chifunyise | 24h | 2.1 |
| 10 | Backend Rest Service |  | 5d? | 2016-10-31 A | 2016-11-04 | 8 | 5d? | 0d | start no earlier than 2016-10-31 | Tsungai Kaviya | 40h | 15 |
| 11 | Frontend Logout |  | 1d? | 2016-11-03 A | 2016-11-03 | 9 | 1d? | 0d |  | David Chifunyise | 8h | 0.7 |
| 12 | Frontend Logo, CSS & Theme |  | 6d? | 2016-11-04 A | 2016-11-11 | 9 | 6d? | 0d | start no earlier than 2016-11-04 | David Chifunyise | 32h | 2.8 |
| 13 | Backend Login |  | 3d? | 2016-11-07 A | 2016-11-09 | 10 | 3d? | 0d | start no earlier than 2016-11-04 | Tsungai Kaviya | 24h | 9 |
| 14 | 1st Test Deployment (Login) | milestone | 2d? | 2016-11-10 A | 2016-11-11 | 9SS, 10SS, 11SS, 12SS, 13SS | 2d? | 0d | start no earlier than 2016-11-10 | Tsungai Kaviya | 16h | 6 |
| 15 | Backend Create Agent |  | 5d? | 2016-11-14 A | 2016-11-18 | 14 | 5d? | 0d |  | Tsungai Kaviya | 40h | 15 |
| 16 | Frontend Create Agent |  | 5d? | 2016-11-14 A | 2016-11-18 | 14 | 5d? | 0d |  | David Chifunyise | 40h | 3.5 |
| 17 | Backend Load Agent Funds |  | 4d? | 2016-11-21 A | 2016-11-24 | 15 | 4d? | 0d |  | Tsungai Kaviya | 32h | 12 |
| 18 | Frontend Load Agent Funds |  | 4d? | 2016-11-21 A | 2016-11-24 | 16 | 4d? | 0d |  | David Chifunyise | 32h | 2.8 |
| 19 | 2nd Test Deployment (Agents) | milestone | 2.5d? | 2016-11-25 A | 2016-11-29 | 18 | 2.5d? | 0d |  | David Chifunyise; Tsungai Kaviya | 40h | 9.25 |
| 20 | Backend Manage Agent Discounts |  | 5d? | 2016-11-29 A | 2016-12-06 | 19 | 5d? | 0d |  | Tsungai Kaviya | 40h | 15 |
| 21 | Frontend Manage Agent Discounts |  | 5d? | 2016-11-29 A | 2016-12-06 | 19 | 5d? | 0d |  | David Chifunyise | 40h | 3.5 |
| 22 | Backend Service Provider Discounts |  | 4d? | 2016-12-06 A | 2016-12-12 | 20 | 4d? | 0d |  | Tsungai Kaviya | 32h | 12 |
| 23 | Frontend Service Provider Discounts |  | 5d? | 2016-12-06 A | 2016-12-13 | 21 | 5d? | 0d |  | David Chifunyise | 40h | 3.5 |
| 24 | 3rd Test Deployment (Discounts) | milestone | 1d? | 2016-12-12 A | 2016-12-13 | 22 | 1d? | 0d |  | Tsungai Kaviya | 8h | 3 |
| 25 | Frontend Service Provider Payments |  | 3d? | 2016-12-13 A | 2016-12-16 | 24 | 3d? | 0d |  | David Chifunyise | 24h | 2.1 |
| 26 | Backend Service Provider Payments |  | 3d? | 2016-12-13 A | 2016-12-16 | 24 | 3d? | 0d |  | Tsungai Kaviya | 24h | 9 |
| 27 | Frontend Service Provider Vouchers |  | 5d? | 2016-12-19 A | 2016-12-23 | 25 | 5d? | 0d | start no earlier than 2016-12-19 | David Chifunyise | 24h | 2.1 |
| 28 | Backend Service Provider Core |  | 5d? | 2016-12-19 A | 2016-12-23 | 26 | 5d? | 0d | start no earlier than 2016-12-17 | Tsungai Kaviya | 24h | 9 |
| 29 | Frontend Service Provider Vouchers |  | 6d? | 2017-01-04 A | 2017-01-11 | 27 | 6d? | 0d | start no earlier than 2017-01-04 | David Chifunyise | 48h | 4.2 |
| 30 | Airtel Integration |  | 6d? | 2017-01-04 A | 2017-01-11 | 28 | 6d? | 0d | start no earlier than 2017-01-04 | Tsungai Kaviya | 48h | 18 |
| 31 | 4th Test Deployement (Service Providers) | milestone | 2d? | 2017-01-12 A | 2017-01-13 | 30 | 2d? | 0d | finish no earlier than 2017-01-13 | Tsungai Kaviya; David Chifunyise | 16h | 3.7 |
| 32 | Backend POS Get Vouchers |  | 5d? | 2017-01-16 A | 2017-01-20 | 31 | 5d? | 0d |  | Tsungai Kaviya | 40h | 15 |
| 33 | Backend Ad hoc Reports |  | 5d? | 2017-01-16 A | 2017-01-20 | 31 | 5d? | 0d |  | David Chifunyise | 40h | 3.5 |
| 34 | Backend POS Buy Voucher |  | 4d? | 2017-01-23 A | 2017-01-26 | 32 | 4d? | 0d |  | Tsungai Kaviya | 32h | 12 |
| 35 | Frontend Ad hoc Reports (Sales) |  | 4d? | 2017-01-23 A | 2017-01-26 | 33 | 4d? | 0d |  | David Chifunyise | 32h | 2.8 |
| 36 | 5th Test Deployement (Buy & Report) | milestone | 1d? | 2017-01-27 A | 2017-01-27 | 34, 35 | 1d? | 0d |  | Tsungai Kaviya; David Chifunyise | 16h | 3.7 |
| 37 | Backend Service Provider Reconciliation |  | 5d? | 2017-01-30 A | 2017-02-03 | 36 | 5d? | 0d |  | Tsungai Kaviya | 40h | 15 |
| 38 | Frontend Ad hoc Reports (Reconciliation) |  | 5d? | 2017-01-30 A | 2017-02-03 | 36 | 5d? | 0d |  | David Chifunyise | 40h | 3.5 |
| 39 | Backend POS Check Balance |  | 4d? | 2017-02-06 A | 2017-02-09 | 38 | 4d? | 0d |  | Tsungai Kaviya | 32h | 12 |
| 40 | Backend Manage SMS text |  | 4d? | 2017-02-06 A | 2017-02-09 | 38 | 4d? | 0d |  | David Chifunyise | 32h | 2.8 |
| 41 | 6th Test Deployment (Reconcile Sales) | milestone | 1d? | 2017-02-10 A | 2017-02-10 | 39, 40 | 1d? | 0d |  | Tsungai Kaviya; David Chifunyise | 16h | 3.7 |
| 42 | Frontend Manage SMS text |  | 3d? | 2017-02-13 A | 2017-02-15 | 41 | 3d? | 0d |  | David Chifunyise | 24h | 2.1 |
| 43 | Backend POS Query Transaction |  | 5d? | 2017-02-13 A | 2017-02-17 | 41 | 5d? | 0d |  | Tsungai Kaviya | 40h | 15 |
| 44 | Backend Create New Frontend User |  | 3d? | 2017-02-16 A | 2017-02-20 | 42 | 3d? | 0d |  | David Chifunyise | 24h | 2.1 |
| 45 | Backend Download POS Program Update |  | 4d? | 2017-02-20 A | 2017-02-23 | 43 | 4d? | 0d | finish no earlier than 2017-02-23 | Tsungai Kaviya | 32h | 12 |
| 46 | Front End Create New Frontend User |  | 3d? | 2017-02-21 A | 2017-02-23 | 44 | 3d? | 0d |  | David Chifunyise | 24h | 2.1 |
| 47 | 7th Test Deployment | milestone | 1d? | 2017-02-24 A | 2017-02-24 | 45, 46 | 1d? | 0d |  | Tsungai Kaviya; David Chifunyise | 16h | 3.7 |
| 48 | Front End Update Frontend User Details |  | 3d? | 2017-02-27 A | 2017-03-01 | 47 | 3d? | 0d |  | David Chifunyise | 24h | 2.1 |
| 49 | Backend Reset Frontend User Password |  | 3d? | 2017-02-27 A | 2017-03-01 | 47 | 3d? | 0d |  | Tsungai Kaviya | 24h | 9 |
| 50 | Front End Reset Frontend User Password |  | 4d? | 2017-03-02 A | 2017-03-07 | 48, 49 | 4d? | 0d |  | David Chifunyise | 32h | 2.8 |
| 51 | Backend Send SMSs |  | 6d? | 2017-03-02 A | 2017-03-09 | 49 | 6d? | 0d |  | Tsungai Kaviya | 48h | 18 |
| 52 | Database Replication |  | 2d? | 2017-03-08 A | 2017-03-09 | 50 | 2d? | 0d |  | David Chifunyise | 16h | 1.4 |
| 53 | 8th Test Deployment | milestone | 1d? | 2017-03-10 A | 2017-03-10 | 52 | 1d? | 0d |  | Tsungai Kaviya; David Chifunyise | 16h | 3.7 |
| 54 | Backend Run Schedule Reports |  | 9d? | 2017-03-13 A | 2017-03-23 | 53 | 9d? | 0d |  | David Chifunyise | 72h | 6.3 |
| 55 | Application Security |  | 9d? | 2017-03-13 A | 2017-03-23 | 53 | 9d? | 0d |  | Tsungai Kaviya | 72h | 27 |
| 56 | 9th Test Deployment | milestone | 1d? | 2017-03-24 A | 2017-03-24 | 54, 55 | 1d? | 0d |  | Tsungai Kaviya; David Chifunyise | 16h | 3.7 |
| 57 | Backend & Frontend SSL |  | 5d? | 2017-03-27 A | 2017-03-31 | 56 | 5d? | 0d |  | David Chifunyise | 40h | 3.5 |
| 58 | Backend Application Reporting |  | 5d? | 2017-03-27 A | 2017-03-31 | 56 | 5d? | 0d |  | Tsungai Kaviya | 40h | 15 |
| 59 | Server security |  | 4d? | 2017-04-03 A | 2017-04-06 | 58 | 4d? | 0d |  | Tsungai Kaviya | 32h | 12 |
| 60 | Frontend UI/UX fixes |  | 4d? | 2017-04-03 A | 2017-04-06 | 57 | 4d? | 0d |  | David Chifunyise | 32h | 2.8 |
| 61 | 10th Test Deployment (Complete) | milestone | 1d? | 2017-04-07 A | 2017-04-07 | 57, 59 | 1d? | 0d |  | Tsungai Kaviya; David Chifunyise | 16h | 3.7 |
